# Projeto puc Training

Schedule from MS Project, 2024-09-02 to 2025-03-07, costs in R$.

## Calendars

- Padrão: Mon-Fri 09:00-12:00, 13:00-18:00; Sat-Sun off.

## Resources

| Resource | Rate |
| --- | --- |
| Luis Felipe (DEV) | 60 |
| Ana Clara (Gerente) | 75 |
| Ryan Samuel (Ux) | 40 |
| Roberto (DEV) | 60 |
| Davi Willian (DEV) | 60 |
| Servidores e Equipamentos | 15000 |
| Equipamento de Desenvolvimento | 5000 |
| Hospedagem na nuvem | 3000 |
| Dominios e Certificados SSL | 500 |
| Licença de software | 2000 |
| Consultoria Externa | 50 |
| Despesas Colaboradores | 4000 |
| Despesas Empresariais | 15000 |
| Mobilia | 20000 |

## Schedule

| ID | WBS | Task | Type | Duration | Start | Finish | Predecessors | Baseline start | Baseline finish | Baseline duration | Total slack | Free slack | Constraint | Resources | Work | Cost | Baseline cost |
| --- | --- | --- | --- | --- | --- | --- | --- | --- | --- | --- | --- | --- | --- | --- | --- | --- | --- |
| 1 | 1 | **Inicialização** |  | 6d | 2024-09-02 | 2024-09-09 |  | 2024-09-02 | 2024-09-09 | 6d | 117.25d |  |  |  | 76h | 5,200 | 5,200 |
| 2 | 1.1 | Desenvolvimento do termo de abertura |  | 2d | 2024-09-02 | 2024-09-03 |  | 2024-09-02 | 2024-09-03 | 2d | 117.25d | 0d | start no earlier than 2024-09-02 | Ana Clara (Gerente); Consultoria Externa | 32h | 2,000 | 2,000 |
| 3 | 1.2 | Levantamento das partes interessadas |  | 1d | 2024-09-04 | 2024-09-04 | 2 | 2024-09-04 | 2024-09-04 | 1d | 117.25d | 0d |  | Ana Clara (Gerente) | 8h | 600 | 600 |
| 4 | 1.3 | Definição de recursos humanos |  | 1d | 2024-09-04 | 2024-09-04 | 2 | 2024-09-04 | 2024-09-04 | 1d | 117.25d | 0d |  | Ana Clara (Gerente) | 8h | 600 | 600 |
| 5 | 1.4 | Definição de escopo |  | 2d | 2024-09-05 | 2024-09-06 | 3, 4 | 2024-09-05 | 2024-09-06 | 2d | 117.25d | 0d |  | Ana Clara (Gerente) | 16h | 1,200 | 1,200 |
| 6 | 1.5 | Preparar KickOff meeting |  | 4h | 2024-09-09 | 2024-09-09 | 5 | 2024-09-09 | 2024-09-09 | 4h | 117.25d | 0d |  | Ana Clara (Gerente); Consultoria Externa | 8h | 500 | 500 |
| 7 | 1.6 | KickOff Meeting |  | 4h | 2024-09-09 | 2024-09-09 | 6 | 2024-09-09 | 2024-09-09 | 4h | 117.25d | 0d |  | Ana Clara (Gerente) | 4h | 300 | 300 |
| 8 | 1.7 | Marco 1 | milestone | 0d | 2024-09-09 | 2024-09-09 | 7 | 2024-09-09 | 2024-09-09 | 0d | 117.25d | 0d |  |  |  |  |  |
| 9 | 2 | **Planejamento** |  | 12d | 2024-09-10 | 2024-09-26 |  | 2024-09-10 | 2024-09-26 | 12d | 12.75d |  |  |  | 222h | 79,510 | 79,510 |
| 10 | 2.1 | Levantamento de requisitos funcionais |  | 6d | 2024-09-10 | 2024-09-17 | 8 | 2024-09-10 | 2024-09-17 | 6d | 117.25d | 0d |  | Ana Clara (Gerente); Luis Felipe (DEV) | 96h | 6,480 | 6,480 |
| 11 | 2.2 | Levantamento de requisitos não funcionais |  | 6d | 2024-09-10 | 2024-09-17 | 8 | 2024-09-10 | 2024-09-17 | 6d | 117.25d | 0d |  | Ana Clara (Gerente); Davi Willian (DEV) | 96h | 6,480 | 6,480 |
| 12 | 2.3 | Definição de cronograma |  | 1d | 2024-09-18 | 2024-09-18 | 10, 11 | 2024-09-18 | 2024-09-18 | 1d | 117.25d | 0d |  | Ana Clara (Gerente) | 8h | 600 | 600 |
| 13 | 2.4 | Plano de recursos |  | 6h | 2024-09-19 | 2024-09-19 | 12 | 2024-09-19 | 2024-09-19 | 6h | 117.25d | 0d |  | Ana Clara (Gerente) | 6h | 450 | 450 |
| 14 | 2.5 | Orçamento |  | 2d | 2024-09-19 | 2024-09-23 | 13 | 2024-09-19 | 2024-09-23 | 2d | 117.25d | 0d |  | Despesas Colaboradores; Despesas Empresariais; Dominios e Certificados SSL; Equipamento de Desenvolvimento; Hospedagem na nuvem; Licença de software; Mobilia; Servidores e Equipamentos |  | 64,500 | 64,500 |
| 15 | 2.6 | Criação plano do projeto |  | 1d | 2024-09-23 | 2024-09-24 | 14 | 2024-09-23 | 2024-09-24 | 1d | 117.25d | 0d |  | Ana Clara (Gerente); Consultoria Externa | 16h | 1,000 | 1,000 |
| 16 | 2.7 | Aprovação plano do projeto |  | 1d | 2024-09-24 | 2024-09-25 | 15 | 2024-09-24 | 2024-09-25 | 1d | 117.25d |  |  |  |  |  |  |
| 17 | 2.8 | Marco 2 | milestone | 0d | 2024-09-26 | 2024-09-26 |  | 2024-09-26 | 2024-09-26 | 0d | 0.75d | 0d | start no earlier than 2024-09-26 |  |  |  |  |
| 18 | 3 | **Modelagem** |  | 9d | 2024-09-26 | 2024-10-09 |  | 2024-09-26 | 2024-10-09 | 9d | 0.75d |  |  |  | 144h | 7,200 | 7,200 |
| 19 | 3.1 | Criação da arquitetura tecnica |  | 3d | 2024-09-26 | 2024-09-30 | 17 | 2024-09-26 | 2024-09-30 | 3d | 114d |  |  | Davi Willian (DEV); Roberto (DEV); Luis Felipe (DEV) | 72h | 4,320 | 4,320 |
| 20 | 3.2 | Design de Interfaces (ux / ui) |  | 7d | 2024-09-26 | 2024-10-04 | 17 | 2024-09-26 | 2024-10-04 | 7d | 0.75d | 0d |  | Ryan Samuel (Ux) | 56h | 2,240 | 2,240 |
| 21 | 3.3 | Desenvolvimento Prototipo Front-End |  | 2d | 2024-10-07 | 2024-10-08 | 20 | 2024-10-07 | 2024-10-08 | 2d | 0.75d | 0d |  | Ryan Samuel (Ux) | 16h | 640 | 640 |
| 22 | 3.4 | Marco 3 | milestone | 0d | 2024-10-09 | 2024-10-09 | 21 | 2024-10-09 | 2024-10-09 | 0d | 0.75d | 0d | start no earlier than 2024-10-09 |  |  |  |  |
| 23 | 4 | **Desenvolvimento** |  | 82d | 2024-10-09 | 2025-01-31 |  | 2024-10-09 | 2025-01-31 | 82d | 0d |  |  |  | 2030h | 121,800 | 121,800 |
| 24 | 4.1 | Desenvolvimento Mobile |  | 650h | 2024-10-09 | 2025-01-30 | 22 | 2024-10-09 | 2025-01-30 | 650h | 0.75d |  |  | Davi Willian (DEV); Roberto (DEV); Luis Felipe (DEV) | 1950h | 117,000 | 117,000 |
| 25 | 4.2 | Integração Banco de dados |  | 10d | 2025-01-15 | 2025-01-28 |  | 2025-01-15 | 2025-01-28 | 10d | 2d |  | start no earlier than 2025-01-15 | Davi Willian (DEV) | 80h | 4,800 | 4,800 |
| 26 | 4.3 | Marco 4 | milestone | 0d | 2025-01-31 | 2025-01-31 | 24, 25 | 2025-01-31 | 2025-01-31 | 0d | 0d |  | start no earlier than 2025-01-31 |  |  |  |  |

| ID | WBS | Task | Type | Duration | Start | Finish | Predecessors | Baseline start | Baseline finish | Baseline duration | Total slack | Constraint | Resources | Work | Cost | Baseline cost |
| --- | --- | --- | --- | --- | --- | --- | --- | --- | --- | --- | --- | --- | --- | --- | --- | --- |
| 27 | 5 | **Entrega** |  | 15d | 2025-01-31 | 2025-02-21 |  | 2025-01-31 | 2025-02-21 | 15d | 0d |  |  | 216h | 13,320 | 13,320 |
| 28 | 5.1 | Teste beta com alunos e feedback |  | 7d | 2025-01-31 | 2025-02-10 | 26 | 2025-01-31 | 2025-02-10 | 7d | 0d |  | Ana Clara (Gerente) | 56h | 4,200 | 4,200 |
| 29 | 5.2 | Ajuste finais |  | 3d | 2025-02-11 | 2025-02-13 | 28 | 2025-02-11 | 2025-02-13 | 3d | 0d |  | Davi Willian (DEV); Ryan Samuel (Ux); Roberto (DEV); Luis Felipe (DEV) | 96h | 5,280 | 5,280 |
| 30 | 5.3 | Homologação |  | 3d | 2025-02-14 | 2025-02-18 | 28, 29 | 2025-02-14 | 2025-02-18 | 3d | 0d |  | Luis Felipe (DEV) | 24h | 1,440 | 1,440 |
| 31 | 5.4 | Implementação app rede puc |  | 2d | 2025-02-19 | 2025-02-20 | 30 | 2025-02-19 | 2025-02-20 | 2d | 0d |  | Ana Clara (Gerente); Consultoria Externa | 32h | 2,000 | 2,000 |
| 32 | 5.5 | Treinamento gravado por video da aplicação |  | 1d | 2025-02-19 | 2025-02-19 | 29, 30 | 2025-02-19 | 2025-02-19 | 1d | 1d |  | Consultoria Externa | 8h | 400 | 400 |
| 33 | 5.6 | Marco 5 | milestone | 0d | 2025-02-21 | 2025-02-21 | 31, 32 | 2025-02-21 | 2025-02-21 | 0d | 0d | start no earlier than 2025-02-21 |  |  |  |  |
| 34 | 6 | **Pós entrega** |  | 11d | 2025-02-21 | 2025-03-07 |  | 2025-02-21 | 2025-03-07 | 11d | 0d |  |  | 368h | 22,200 | 22,200 |
| 35 | 6.1 | Suporte inicial |  | 7d | 2025-02-21 | 2025-03-03 | 33 | 2025-02-21 | 2025-03-03 | 7d | 0d |  | Davi Willian (DEV); Luis Felipe (DEV); Roberto (DEV) | 168h | 10,080 | 10,080 |
| 36 | 6.2 | Resolução de problemas |  | 7d | 2025-02-21 | 2025-03-03 | 33 | 2025-02-21 | 2025-03-03 | 7d | 0d |  | Davi Willian (DEV); Luis Felipe (DEV); Roberto (DEV) | 168h | 10,080 | 10,080 |
| 37 | 6.3 | Atualização de manutenção |  | 3d | 2025-03-04 | 2025-03-06 | 35, 36 | 2025-03-04 | 2025-03-06 | 3d | 0d |  | Roberto (DEV) | 24h | 1,440 | 1,440 |
| 38 | 6.4 | Avaliação final e fechamento do projeto |  | 1d | 2025-03-07 | 2025-03-07 | 37 | 2025-03-07 | 2025-03-07 | 1d | 0d |  | Ana Clara (Gerente) | 8h | 600 | 600 |
| 39 | 6.5 | Marco 6 | milestone | 0d | 2025-03-07 | 2025-03-07 | 38 | 2025-03-07 | 2025-03-07 | 0d | 0d |  |  |  |  |  |
